# Practica2

Schedule from MS Project, 2021-01-01 to 2021-04-21, costs in €.

## Calendars

- Estándar: Mon-Fri 09:00-13:00, 15:00-19:00; Sat-Sun off.

## Resources

| Resource | Rate |
| --- | --- |
| Jefe de Proyecto | 15 |
| Consultor | 9.38 |
| Analista Funcional | 11.25 |
| Analista Programador | 10 |
| Programador | 7.5 |
| Diseñador y Administrador de Base de Datos | 11.88 |
| Técnico de Sistemas | 12.5 |
| Diseñador | 11.88 |
| Diseñador Web | 11.88 |
| Ordenador | 1100 |
| SO | 120 |
| SO - PC | 10 |
| OFIMATICA | 200 |
| OFIMATICA - PC | 20 |
| CASE | 500 |
| SERVIDOR DESARROLLO | 2000 |
| SERVIDOR PREEXPLOTACION | 2100 |
| TRANSPORTE SERVIDOR | 40 |

## Schedule

| ID | WBS | Task | Duration | Start | Finish | Predecessors | Total slack | Free slack | Resources | Work | Cost |
| --- | --- | --- | --- | --- | --- | --- | --- | --- | --- | --- | --- |
| 1 | 1 | **1. Requerimientos de los usuarios** | 5.5d | 2021-01-01 | 2021-01-08 |  | 0d |  |  | 44h | 495 |
| 2 | 1.1 | 1.1 Toma de requisitos de usuario | 4d | 2021-01-01 | 2021-01-06 |  | 0d |  | Analista Funcional | 32h | 360 |
| 3 | 1.2 | 1.2 Validación de los requisitos de usuario | 12h | 2021-01-07 | 2021-01-08 | 2 | 0d |  | Analista Funcional | 12h | 135 |
| 4 | 2 | **2. Análisis de requisitos del software** | 13d | 2021-01-08 | 2021-01-27 | 1 | 0d |  |  | 124h | 17,662.5 |
| 5 | 2.1 | 2.1 Estudio de los requisitos del software | 6d | 2021-01-08 | 2021-01-18 |  | 0d |  | Analista Programador [75%]; Consultor [50%] | 60h | 585 |
| 6 | 2.2 | 2.2 Validación de los requisitos del software | 1d | 2021-01-18 | 2021-01-19 | 5 | 0d |  | Analista Programador [50%]; Consultor [50%] | 8h | 77.5 |
| 7 | 2.3 | 2.3 Instalación del software necesario en los PCs | 4d | 2021-01-19 | 2021-01-25 | 6 | 0d |  | Técnico de Sistemas; SO; SO - PC [1000%]; OFIMATICA; OFIMATICA - PC [1000%]; CASE | 32h | 1,520 |
| 8 | 2.4 | 2.4 Preparación de los puestos de trabajo | 2d | 2021-01-25 | 2021-01-27 | 7, 13 | 0d |  | Técnico de Sistemas [50%]; Ordenador [1000%] | 8h | 11,100 |
| 9 | 2.5 | 2.5 Preparación del servidor de desarrollo | 2d | 2021-01-25 | 2021-01-27 | 7 | 0d |  | Técnico de Sistemas [50%]; SERVIDOR DESARROLLO; TRANSPORTE SERVIDOR | 8h | 2,140 |
| 10 | 2.6 | 2.6 Preparación del servidor de preexplotación | 2d | 2021-01-25 | 2021-01-27 | 7 | 0d |  | Técnico de Sistemas [50%]; SERVIDOR PREEXPLOTACION; TRANSPORTE SERVIDOR | 8h | 2,240 |
| 11 | 3 | **3. Análisis de requerimientos del sistema** | 4d | 2021-01-08 | 2021-01-14 | 1 | 9d |  |  | 32h | 375 |
| 12 | 3.1 | 3.1 Estimación del hardware necesario | 32h | 2021-01-08 | 2021-01-14 |  | 9d |  | Analista Funcional [50%] | 16h | 180 |
| 13 | 3.2 | 3.2 Validación del hardware necesario | 16h | 2021-01-08 | 2021-01-12 |  | 9d |  | Jefe de Proyecto [50%]; Consultor [50%] | 16h | 195 |
| 14 | 4 | **4. Diseño preliminar** | 12d | 2021-01-27 | 2021-02-12 | 4, 11 | 0d |  |  | 232h | 2,550 |
| 15 | 4.1 | 4.1 Diseño de los datos y procesos | 10d | 2021-01-27 | 2021-02-10 |  | 0d |  | Diseñador; Analista Funcional [50%]; Analista Programador [50%] | 160h | 1,800 |
| 16 | 4.2 | 4.2 Diseño del plan de pruebas | 3d | 2021-02-09 | 2021-02-12 | 15FS-8h | 0d |  | Diseñador; Consultor; Analista Programador | 72h | 750 |
| 17 | 5 | **5. Diseño detallado** | 13d | 2021-02-12 | 2021-03-03 | 14 | 0d |  |  | 168h | 1,935 |
| 18 | 5.1 | 5.1 Diseño gráfico de la aplicación | 4d | 2021-02-12 | 2021-02-18 |  | 0d |  | Diseñador [75%]; Diseñador Web | 56h | 665 |
| 19 | 5.2 | **5.2 DSI Técnico de componentes** | 12d | 2021-02-15 | 2021-03-03 | 18FS-3d | 0d |  |  | 112h | 1,270 |
| 20 | 5.2.1 | 5.2.1 DSI-HR01 Presentación | 1d | 2021-02-15 | 2021-02-16 |  | 0d |  | Diseñador; Analista Programador [50%] | 12h | 135 |
| 21 | 5.2.2 | 5.2.2 DSI-HR02 Mantenimiento de Explotación Ganadera | 3d | 2021-02-16 | 2021-02-19 | 20 | 0d |  | Diseñador; Analista Programador [50%] | 36h | 405 |
| 22 | 5.2.3 | 5.2.3 DSI-HR03 Mantenimiento de Historial; Reservas, Tarifas y Eventos | 5d | 2021-02-19 | 2021-02-26 | 21 | 0d |  | Diseñador [75%]; Analista Programador [25%] | 40h | 456.25 |
| 23 | 5.2.4 | 5.2.4 DSI-HR07 Localización | 3d | 2021-02-26 | 2021-03-03 | 22 | 0d |  | Diseñador [75%]; Analista Programador [25%] | 24h | 273.75 |
| 24 | 6 | **6. Diseño de la Base de Datos** | 9d | 2021-02-12 | 2021-02-25 | 14 | 4d |  |  | 136h | 1,495 |
| 25 | 6.1 | 6.1 Diseño de las Tablas y Relaciones | 4d | 2021-02-12 | 2021-02-18 |  | 4d | 0d | Diseñador y Administrador de Base de Datos; Diseñador [25%] | 40h | 475 |
| 26 | 6.2 | 6.2 Validación del Diseño de la BBDD | 6d | 2021-02-17 | 2021-02-25 | 25FS-1d | 4d |  | Diseñador y Administrador de Base de Datos; Consultor | 96h | 1,020 |

| ID | WBS | Task | Duration | Start | Finish | Predecessors | Total slack | Resources | Work | Cost |
| --- | --- | --- | --- | --- | --- | --- | --- | --- | --- | --- |
| 27 | 7 | **7. Construcción** | 16d | 2021-03-03 | 2021-03-25 | 17, 24 | 0d |  | 432h | 3,405 |
| 28 | 7.1 | 7.1 Construcción del prototipo | 3d | 2021-03-03 | 2021-03-08 |  | 3d | Analista Programador; Programador [200%] | 72h | 600 |
| 29 | 7.2 | 7.2 Construcción de la BBDD | 6d | 2021-03-03 | 2021-03-11 |  | 0d | Diseñador y Administrador de Base de Datos [50%]; Programador [200%] | 120h | 1,005 |
| 30 | 7.3 | 7.3 Codificación | 10d | 2021-03-11 | 2021-03-25 | 28, 29 | 0d | Programador [300%] | 240h | 1,800 |
| 31 | 8 | **8. Pruebas** | 12d | 2021-03-24 | 2021-04-09 | 27FS-1d | 0d |  | 256h | 2,415 |
| 32 | 8.1 | 8.1 Pruebas unitarias | 4d | 2021-03-24 | 2021-03-30 |  | 0d | Analista Programador; Programador | 64h | 560 |
| 33 | 8.2 | 8.2 Pruebas de Integración | 3d | 2021-03-30 | 2021-04-02 | 32 | 0d | Analista Programador; Programador; Diseñador y Administrador de Base de Datos | 72h | 705 |
| 34 | 8.3 | 8.3 Pruebas de sistema | 5d | 2021-04-02 | 2021-04-09 | 33 | 0d | Analista Programador; Programador; Analista Funcional | 120h | 1,150 |
| 35 | 9 | **9. Demostración a los usuarios** | 5d | 2021-04-14 | 2021-04-21 | 31FS+3d | 0d |  | 96h | 1,080 |
| 36 | 9.1 | 9.1 Entrenamiento de usuarios | 24h | 2021-04-14 | 2021-04-19 |  | 0d | Analista Programador; Analista Funcional | 48h | 510 |
| 37 | 9.2 | 9.2 Validación del producto por los usuarios | 2d | 2021-04-19 | 2021-04-21 | 36 | 0d | Jefe de Proyecto; Consultor; Analista Funcional | 48h | 570 |
